# Sistema de Atencion Odontologico

Schedule from MS Project, 2014-08-13 to 2014-11-04, costs in S/., A marks actual dates.

## Calendars

- Estándar: Mon-Fri 09:00-13:00, 15:00-19:00; Sat-Sun off.

## Resources

| Resource | Rate |
| --- | --- |
| Gestor de Proyecto | 120 |
| Líder Técnico | 80 |
| Analista 1 | 70 |
| Diseñador | 50 |
| Programador | 65 |
| Laptop GP | 5 |
| Laptop LT | 5 |
| Laptop A1 | 5 |
| Lapto Dis | 5 |
| Lapto Pr | 5 |
| Analista 2 | 70 |

## Schedule

| ID | WBS | Task | Type | Duration | Start | Finish | Predecessors | Complete | Remaining | Actual start | Actual finish | Total slack | Resources | Work | Actual work | Cost | Actual cost | Semaforo |
| --- | --- | --- | --- | --- | --- | --- | --- | --- | --- | --- | --- | --- | --- | --- | --- | --- | --- | --- |
| 2 | 1 | **CRONOGRAMA DE PLAN DE PROYECTO: Sistema de Atencion Odontologico** |  | 60d | 2014-08-13 | 2014-11-04 |  | 81% | 11.49d | 2014-08-14 |  |  |  | 1216h | 842h | 56,160 | 42,360 |  |
| 3 | 1.1 | **Gestión de Proyecto** |  | 60d | 2014-08-13 | 2014-11-04 |  | 81% | 11.49d | 2014-08-14 |  | 0d |  | 1216h | 842h | 56,160 | 42,360 |  |
| 4 | 1.1.1 | **Planeacion del Proyecto** |  | 16d | 2014-08-13 | 2014-09-03 |  | 100% |  | 2014-08-14 | 2014-08-21 |  |  | 120h | 120h | 9,760 | 9,760 |  |
| 5 | 1.1.1.1 | Acta de Reunion Nº1 | milestone, manual | 0d | 2014-08-14 A | 2014-08-14 A |  | 100% |  |  |  |  |  |  |  |  |  | 100 |
| 6 | 1.1.1.2 | Enunciado del Trabajo | manual | 1d | 2014-08-14 A | 2014-08-14 A |  | 100% |  |  |  |  | Gestor de Proyecto; Laptop GP; Laptop LT | 24h | 24h | 1,040 | 1,040 | 100 |
| 7 | 1.1.1.3 | Acta de Reunion Nº2 | milestone, manual | 0d | 2014-08-20 A | 2014-08-20 A | 5 | 100% |  |  |  |  |  |  |  |  |  | 100 |
| 8 | 1.1.1.4 | Revision y modificacion del Enuncuado de Trabajo | manual | 1d | 2014-08-20 A | 2014-08-20 A |  | 100% |  |  |  |  | Gestor de Proyecto; Laptop GP; Líder Técnico | 24h | 24h | 1,640 | 1,640 | 100 |
| 9 | 1.1.1.5 | Lista de Riesgos | manual | 1d | 2014-08-20 A | 2014-08-20 A |  | 100% |  |  |  |  | Gestor de Proyecto; Laptop LT | 16h | 16h | 1,000 | 1,000 | 100 |
| 10 | 1.1.1.6 | Ms Proyect | manual | 1d | 2014-08-20 A | 2014-08-20 A |  | 100% |  |  |  |  | Gestor de Proyecto | 8h | 8h | 960 | 960 | 100 |
| 11 | 1.1.1.7 | Costo de Proyecto | manual | 1d | 2014-08-20 A | 2014-08-20 A |  | 100% |  |  |  |  | Gestor de Proyecto | 8h | 8h | 960 | 960 | 100 |
| 12 | 1.1.1.8 | Plantilla de Plan de Proyecto | manual | 2d | 2014-08-20 A | 2014-08-21 A |  | 100% |  |  |  |  | Gestor de Proyecto; Líder Técnico | 32h | 32h | 3,200 | 3,200 | 100 |
| 13 | 1.1.1.9 | Repositorio del Proyecto | manual | 1d | 2014-08-21 A | 2014-08-21 A |  | 100% |  |  |  |  | Gestor de Proyecto | 8h | 8h | 960 | 960 | 100 |
| 14 | 1.1.2 | **Ejecucion de Plan de Proyecto** |  | 35d | 2014-09-02 A | 2014-10-18 |  | 83% | 5.83d |  |  |  |  | 1056h | 704h | 43,760 | 31,440 |  |
| 15 | 1.1.2.1 | **Analisis de Requisitos del Software** |  | 6d | 2014-09-02 A | 2014-09-09 A |  | 100% |  |  |  |  |  | 296h | 296h | 14,880 | 14,880 |  |
| 16 | 1.1.2.1.1 | Acta de Reunion Nº3 | milestone, manual | 0d | 2014-09-02 A | 2014-09-02 A | 7 | 100% |  |  |  |  |  |  |  |  |  | 100 |
| 17 | 1.1.2.1.2 | Revision del Plan de Proyecto | manual | 1d | 2014-09-02 A | 2014-09-02 A |  | 100% |  |  |  |  | Analista 1; Laptop A1; Gestor de Proyecto; Analista 2 | 32h | 32h | 2,120 | 2,120 | 100 |
| 18 | 1.1.2.1.3 | Verificacion de tipos de Requerimientos | manual | 1d | 2014-09-02 A | 2014-09-02 A |  | 100% |  |  |  |  | Analista 1; Analista 2; Laptop A1 | 24h | 24h | 1,160 | 1,160 | 100 |
| 19 | 1.1.2.1.4 | Acta de Reunion Nº4 | milestone, manual | 0d | 2014-09-04 A | 2014-09-04 A | 16 | 100% |  |  |  |  |  |  |  |  |  | 100 |
| 20 | 1.1.2.1.5 | Especificacion de Requerimientos de Software | manual | 1d | 2014-09-04 A | 2014-09-04 A |  | 100% |  |  |  |  | Analista 1; Analista 2; Laptop A1 | 24h | 24h | 1,160 | 1,160 | 100 |
| 21 | 1.1.2.1.6 | ECU - Generar Cita | manual | 1d | 2014-09-04 A | 2014-09-04 A |  | 100% |  |  |  |  | Analista 1; Analista 2; Laptop A1 | 24h | 24h | 1,160 | 1,160 | 100 |
| 22 | 1.1.2.1.7 | ECU - Generar ODP | manual | 1d | 2014-09-04 A | 2014-09-04 A |  | 100% |  |  |  |  | Analista 1; Analista 2; Laptop A1 | 24h | 24h | 1,160 | 1,160 | 100 |
| 23 | 1.1.2.1.8 | ECU - Mantener Paciente | manual | 1d | 2014-09-04 A | 2014-09-04 A |  | 100% |  |  |  |  | Analista 1; Analista 2; Laptop A1 | 24h | 24h | 1,160 | 1,160 | 100 |
| 24 | 1.1.2.1.9 | Acta de Reunion Nº5 | milestone, manual | 0d | 2014-09-06 A | 2014-09-06 A | 19 | 100% |  |  |  |  |  |  |  |  |  | 100 |
| 25 | 1.1.2.1.10 | ECU - Mantener Odontologo | manual | 1d | 2014-09-06 A | 2014-09-06 A |  | 100% |  |  |  |  | Analista 1; Analista 2; Laptop A1 | 24h | 24h | 1,160 | 1,160 | 100 |
| 26 | 1.1.2.1.11 | ECU - Mantener Servicios Odontologicos | manual | 1d | 2014-09-06 A | 2014-09-06 A |  | 100% |  |  |  |  | Analista 1; Analista 2; Laptop A1 | 24h | 24h | 1,160 | 1,160 | 100 |
| 27 | 1.1.2.1.12 | Acta de Reunion Nº6 | milestone, manual | 0d | 2014-09-09 A | 2014-09-09 A | 24 | 100% |  |  |  |  |  |  |  |  |  | 100 |
| 28 | 1.1.2.1.13 | ECU - Generar Historial Clinico | manual | 1d | 2014-09-09 A | 2014-09-09 A |  | 100% |  |  |  |  | Analista 1; Analista 2; Laptop A1 | 24h | 24h | 1,160 | 1,160 | 100 |
| 29 | 1.1.2.1.14 | ECU - Actualizar Historial Clinico | manual | 1d | 2014-09-09 A | 2014-09-09 A |  | 100% |  |  |  |  | Analista 1; Analista 2; Laptop A1 | 24h | 24h | 1,160 | 1,160 | 100 |
| 30 | 1.1.2.1.15 | ECU - Actualizar Cita | manual | 1d | 2014-09-09 A | 2014-09-09 A |  | 100% |  |  |  |  | Analista 1; Analista 2; Laptop A1 | 24h | 24h | 1,160 | 1,160 | 100 |
| 31 | 1.1.2.1.16 | ECU - Generar CDP | manual | 1d | 2014-09-09 A | 2014-09-09 A |  | 100% |  |  |  |  | Analista 1; Analista 2; Laptop A1 | 24h | 24h | 1,160 | 1,160 | 100 |

| ID | WBS | Task | Type | Duration | Start | Finish | Predecessors | Complete | Remaining | Actual finish | Resources | Work | Actual work | Cost | Actual cost | Semaforo |
| --- | --- | --- | --- | --- | --- | --- | --- | --- | --- | --- | --- | --- | --- | --- | --- | --- |
| 32 | 1.1.2.2 | **Arquitectura y Diseño detallado del Software** |  | 9d | 2014-09-11 A | 2014-09-23 |  | 100% |  | 2014-09-16 |  | 120h | 120h | 6,480 | 6,480 |  |
| 33 | 1.1.2.2.1 | Acta de Reunion Nº7 | milestone, manual | 0d | 2014-09-11 A | 2014-09-11 A | 27 | 100% |  |  |  |  |  |  |  | 100 |
| 34 | 1.1.2.2.2 | RD - Generar Cita | manual | 1d | 2014-09-11 A | 2014-09-11 A |  | 100% |  |  | Líder Técnico; Laptop LT; Diseñador | 24h | 24h | 1,080 | 1,080 | 100 |
| 35 | 1.1.2.2.3 | RD - Generar ODP | manual | 1d | 2014-09-11 A | 2014-09-11 A |  | 100% |  |  | Diseñador; Laptop LT; Líder Técnico | 24h | 24h | 1,080 | 1,080 | 100 |
| 36 | 1.1.2.2.4 | Acta de Reunion Nº8 | milestone, manual | 0d | 2014-09-13 A | 2014-09-13 A | 33 | 100% |  |  |  |  |  |  |  | 100 |
| 37 | 1.1.2.2.5 | RD - Mantener Paciente | manual | 1d | 2014-09-13 A | 2014-09-13 A |  | 100% |  |  | Líder Técnico; Laptop LT; Diseñador | 24h | 24h | 1,080 | 1,080 | 100 |
| 38 | 1.1.2.2.6 | Acta de Reunion Nº9 | milestone, manual | 0d | 2014-09-16 A | 2014-09-16 A | 36 | 100% |  |  |  |  |  |  |  | 100 |
| 39 | 1.1.2.2.7 | Modelo Conceptual | manual | 1d | 2014-09-16 A | 2014-09-16 A |  | 100% |  |  | Diseñador; Líder Técnico; Laptop LT | 8h | 8h | 640 | 640 | 100 |
| 40 | 1.1.2.2.8 | Modelo Logico | manual | 1d | 2014-09-16 A | 2014-09-16 A |  | 100% |  |  | Diseñador; Líder Técnico; Laptop LT | 8h | 8h | 640 | 640 | 100 |
| 41 | 1.1.2.2.9 | Modelo Fisico | manual | 1d | 2014-09-16 A | 2014-09-16 A |  | 100% |  |  | Diseñador; Líder Técnico; Laptop LT | 8h | 8h | 640 | 640 | 100 |
| 42 | 1.1.2.2.10 | Diseño Detallado de Software | manual | 1d | 2014-09-16 A | 2014-09-16 A |  | 100% |  |  | Analista 1; Líder Técnico; Laptop LT; Analista 2 | 8h | 8h | 640 | 640 | 100 |
| 43 | 1.1.2.2.11 | Registro de Trazabilidad | manual | 1d | 2014-09-16 A | 2014-09-16 A |  | 100% |  |  | Analista 1; Laptop LT; Líder Técnico; Analista 2 | 16h | 16h | 680 | 680 | 100 |
| 44 | 1.1.2.3 | **Construccion de Software** |  | 12d | 2014-09-25 A | 2014-10-10 |  | 73% | 3.28d |  |  | 512h | 180h | 17,920 | 6,300 |  |
| 45 | 1.1.2.3.1 | Acta de Reunion Nº10 | manual | 12d | 2014-09-25 A | 2014-10-10 A | 38 | 100% |  |  |  |  |  |  |  | 100 |
| 46 | 1.1.2.3.2 | **Inicio de la Construccion de Software** |  | 12d | 2014-09-25 A | 2014-10-10 |  | 75% | 3d |  | Lapto Pr; Programador | 320h | 96h | 11,200 | 3,360 |  |
| 47 | 1.1.2.3.2.1 | Desarrollo del Modelo (Scripts SQL) | manual | 3d | 2014-09-25 A | 2014-09-29 |  | 75% | 0.75d |  | Lapto Pr; Programador | 48h | 36h | 1,680 | 1,260 | 75 |
| 48 | 1.1.2.3.2.2 | Desarrollo de Controladores (Web Service) | manual | 2d | 2014-09-25 A | 2014-09-26 |  | 75% | 0.5d |  | Lapto Pr; Programador | 32h | 24h | 1,120 | 840 | 75 |
| 49 | 1.1.2.3.2.3 | Desarrollo de la vista (Página Web) | manual | 3d | 2014-09-25 A | 2014-09-29 |  | 75% | 0.75d |  | Lapto Pr; Programador | 48h | 36h | 1,680 | 1,260 | 75 |
| 50 | 1.1.2.3.3 | Diseño de Software | manual | 6d | 2014-09-25 A | 2014-10-02 |  | 75% | 1.5d |  | Lapto Pr; Programador | 96h | 72h | 3,360 | 2,520 | 75 |
| 51 | 1.1.2.3.4 | Componente de Software | manual | 6d | 2014-09-25 A | 2014-10-02 |  | 13% | 5.25d |  | Lapto Pr; Programador | 96h | 12h | 3,360 | 420 | 13 |
| 52 | 1.1.2.4 | **Integracion y Pruebas de Sofware** |  | 7d | 2014-10-11 A | 2014-10-18 |  | 84% | 1.09d |  |  | 128h | 108h | 4,480 | 3,780 |  |
| 53 | 1.1.2.4.1 | Acta de Reunion Nº11 | milestone, manual | 0d | 2014-10-11 A | 2014-10-11 | 45 | 50% | 0d |  |  |  |  |  |  | 50 |
| 54 | 1.1.2.4.2 | Plan de Pruebas | manual | 1d | 2014-10-11 A | 2014-10-11 A |  | 100% |  |  | Programador; Lapto Pr | 16h | 16h | 560 | 560 | 100 |
| 55 | 1.1.2.4.3 | ECP - Generar Cita | manual | 1d | 2014-10-11 A | 2014-10-11 A |  | 100% |  |  | Programador; Lapto Pr | 16h | 16h | 560 | 560 | 100 |
| 56 | 1.1.2.4.4 | ECP - CDP | manual | 1d | 2014-10-11 A | 2014-10-11 A |  | 100% |  |  | Programador; Lapto Pr | 16h | 16h | 560 | 560 | 100 |
| 57 | 1.1.2.4.5 | ECP - Generar Historial Clinico | manual | 1d | 2014-10-11 A | 2014-10-11 A |  | 100% |  |  | Programador; Lapto Pr | 16h | 16h | 560 | 560 | 100 |
| 58 | 1.1.2.4.6 | ECP - Actualizar Cita | manual | 1d | 2014-10-11 A | 2014-10-11 A |  | 100% |  |  | Programador; Lapto Pr | 16h | 16h | 560 | 560 | 100 |
| 59 | 1.1.2.4.7 | Acta de Reunion Nº12 | milestone, manual | 0d | 2014-10-14 A | 2014-10-14 | 53 | 25% | 0d |  |  |  |  |  |  | 25 |
| 60 | 1.1.2.4.8 | Manual de Usuario | manual | 1d | 2014-10-14 A | 2014-10-14 |  | 75% | 0.25d |  | Programador; Lapto Pr | 16h | 12h | 560 | 420 | 75 |
| 61 | 1.1.2.4.9 | Manual de Mantenimiento | manual | 1d | 2014-10-14 A | 2014-10-14 |  | 75% | 0.25d |  | Programador; Lapto Pr | 16h | 12h | 560 | 420 | 75 |
| 62 | 1.1.2.4.10 | Manual de Operación | manual | 1d | 2014-10-14 A | 2014-10-14 |  | 25% | 0.75d |  | Lapto Pr; Programador | 16h | 4h | 560 | 140 | 25 |

| ID | WBS | Task | Type | Duration | Start | Finish | Predecessors | Complete | Remaining | Actual start | Resources | Work | Actual work | Cost | Actual cost | Semaforo |
| --- | --- | --- | --- | --- | --- | --- | --- | --- | --- | --- | --- | --- | --- | --- | --- | --- |
| 63 | 1.1.3 | **Evaluacion y control de Proyecto** |  | 6d | 2014-10-18 A | 2014-10-24 |  | 50% | 3d |  |  | 32h | 16h | 1,680 | 920 |  |
| 64 | 1.1.3.1 | Acta de Reunion Nº13 | manual | 6d | 2014-10-18 A | 2014-10-24 | 59 | 50% | 3d |  |  |  |  |  |  | 50 |
| 65 | 1.1.3.2 | Solicitud de Cambio | manual | 1d | 2014-10-18 A | 2014-10-18 |  | 75% | 0.25d |  | Gestor de Proyecto; Laptop GP | 16h | 12h | 1,000 | 750 | 75 |
| 66 | 1.1.3.3 | Resultado de Validadcion | manual | 1d | 2014-10-18 A | 2014-10-18 |  | 25% | 0.75d |  | Laptop LT; Líder Técnico | 16h | 4h | 680 | 170 | 25 |
| 67 | 1.1.4 | **Cierre de Proyecto** |  | 8d | 2014-10-25 | 2014-11-04 |  | 25% | 6d | 2014-10-28 |  | 8h | 2h | 960 | 240 |  |
| 68 | 1.1.4.1 | Acta de Reunion Nº14 | milestone, manual | 0d | 2014-10-28 A | 2014-10-28 | 64 | 25% | 0d |  |  |  |  |  |  | 25 |
| 69 | 1.1.4.2 | Acta de Aceptacion | manual | 1d | 2014-10-28 A | 2014-10-28 |  | 25% | 0.75d |  | Gestor de Proyecto | 8h | 2h | 960 | 240 | 25 |
